# ЛР №1

Schedule from MS Project, 2024-03-01 to 2024-09-18, costs in ₽.
Команда разработчиков из 16 человек занимается созданием карты города на основе собственного модуля отображения. Проект должен быть завершен в течение 6 месяцев. Бюджет проекта: 50 000 рублей.

## Calendars

- Стандартный: Mon-Fri 09:00-13:00, 14:00-18:00; Sat-Sun off. Exceptions (off unless hours are given): 2024-03-08 (Международный женский день), 2024-04-27 09:00-13:00, 14:00-18:00 (Рабочая суббота 1), 2024-04-29 to 2024-05-01 (Празник Весны и Труда), 2024-05-09 to 2024-05-10 (День Победы), 2024-06-12 (День России).

## Resources

| Resource | Group | Rate | Cost per use |
| --- | --- | --- | --- |
| Ведущий программист | Программирование | 10 | 100 |
| Программист №1 | Программирование | 7 | 50 |
| Программист №2 | Программирование | 7 | 50 |
| Программист №3 | Программирование | 7 | 50 |
| Программист №4 | Программирование | 7 | 50 |
| Системный аналитик | Анализ | 20 | 300 |
| Художник-дизайнер | Дизайн | 8 | 70 |
| Технический писатель | Документация | 5 | 20 |
| Web-дизайнер | Internet | 7 | 50 |
| 3D аниматор | Дизайн | 8 | 70 |
| Мультимедиа-корреспондент | М-медиа | 3 | 20 |
| Наборщик данных №1 | Ввод данных | 2 | 10 |
| Наборщик данных №2 | Ввод данных | 2 | 10 |
| Наборщик данных №3 | Ввод данных | 2 | 10 |
| Наборщик данных №4 | Ввод данных | 2 | 10 |
| Набощик данных №5 | Ввод данных | 2 | 10 |
| Дополнительный сервер | Оборудование | 2 |  |

## Schedule

| ID | WBS | Task | Type | Duration | Start | Finish | Predecessors | Total slack | Free slack | Resources | Work | Cost |
| --- | --- | --- | --- | --- | --- | --- | --- | --- | --- | --- | --- | --- |
| 1 | 1 | Начало проекта | milestone, manual | 0w | 2024-03-01 | 2024-03-01 |  |  |  |  |  |  |
| 2 | 2 | **Проектирование** |  | 40d | 2024-03-01 | 2024-04-26 | 1 | 0d |  |  | 1553h | 15,516 |
| 3 | 2.1 | **Разработка дизайна интерфейса** |  | 25d | 2024-03-01 | 2024-04-05 |  | 15d |  |  | 448h | 3,986 |
| 4 | 2.1.1 | Разработка 2D графических элементов |  | 3w | 2024-03-01 | 2024-03-22 |  | 15d | 0d | Художник-дизайнер | 120h | 1,030 |
| 5 | 2.1.2 | Разработка 3D графических элементов |  | 2w | 2024-03-01 | 2024-03-15 | 4SS | 15d | 0d | 3D аниматор | 80h | 710 |
| 6 | 2.1.3 | Создание заставки |  | 3w | 2024-03-18 | 2024-04-05 | 5 | 15d |  | 3D аниматор | 120h | 1,030 |
| 7 | 2.1.4 | Разработка структуры сайта |  | 1d | 2024-03-01 | 2024-03-01 |  | 34d | 0d | Web-дизайнер | 8h | 106 |
| 8 | 2.1.5 | Разработка дизайна сайта |  | 1w | 2024-03-04 | 2024-03-11 | 7 | 34d |  | Web-дизайнер; Художник-дизайнер; 3D аниматор | 120h | 1,110 |
| 9 | 2.2 | Анализ и проектирование ядра |  | 3w | 2024-03-01 | 2024-03-22 |  | 0d |  | Ведущий программист; Системный аналитик | 240h | 4,000 |
| 10 | 2.3 | Создание модели ядра |  | 5w | 2024-03-25 | 2024-04-26 | 9 | 0d |  | Программист №1; Ведущий программист | 400h | 3,550 |
| 11 | 2.4 | Анализ и построение структуры базы объектов |  | 2w | 2024-03-01 | 2024-03-15 |  | 30d |  | Системный аналитик; Дополнительный сервер | 425h | 2,590 |
| 12 | 2.5 | Разработка дизайна руководства |  | 1w | 2024-03-01 | 2024-03-07 |  | 35d |  | Художник-дизайнер | 40h | 390 |
| 13 | 3 | **Кодирование** |  | 78d | 2024-04-26 | 2024-08-22 | 2 | 0d |  |  | 7250h | 27,100 |
| 14 | 3.1 | Программирование средств обработки базы объектов |  | 12.43w | 2024-04-26 | 2024-05-23 |  | 0d |  | Программист №3; Программист №4; Дополнительный сервер | 681h | 2,662 |
| 15 | 3.2 | Наполнение базы объектов |  | 54.23w | 2024-05-23 | 2024-08-22 | 14 | 0d |  | Наборщик данных №3; Наборщик данных №4; Набощик данных №5; Наборщик данных №1; Наборщик данных №2; Дополнительный сервер | 4569h | 9,188 |
| 16 | 3.3 | Создание рабочей версии ядра |  | 10w | 2024-04-27 | 2024-07-12 |  | 3d | 0d | Программист №2; Ведущий программист; Программист №1 | 1200h | 9,800 |
| 17 | 3.4 | Программирование интерфейса |  | 3w | 2024-07-15 | 2024-08-02 | 16 | 3d | 0d | Программист №4; Программист №3 | 240h | 1,780 |
| 18 | 3.5 | Создание справочной системы |  | 2w | 2024-08-05 | 2024-08-16 | 17 | 3d |  | Технический писатель | 80h | 420 |
| 19 | 3.6 | Создание мультимедиа-наполнения |  | 6w | 2024-04-27 | 2024-06-14 |  | 48d |  | Мультимедиа-корреспондент | 240h | 740 |
| 20 | 3.7 | Написание руководства пользователя |  | 3w | 2024-04-27 | 2024-05-23 |  | 63d |  | Технический писатель | 120h | 620 |
| 21 | 3.8 | Наполнение сайта |  | 3w | 2024-04-27 | 2024-05-23 |  | 63d |  | Web-дизайнер | 120h | 890 |
| 22 | 4 | **Тестирование** |  | 20d | 2024-08-22 | 2024-09-18 | 13 | 0d |  |  | 520h | 5,370 |
| 23 | 4.1 | Тестирование модели ядра |  | 1w | 2024-08-22 | 2024-08-28 |  | 15d |  | Программист №1 | 40h | 330 |
| 24 | 4.2 | Тестирование сайта |  | 4w | 2024-08-22 | 2024-09-18 |  | 0d |  | Ведущий программист; Программист №1; Программист №2 | 480h | 4,040 |
| 25 | 5 | Сдача сайта в эксплуатацию | milestone | 0w | 2024-09-18 | 2024-09-18 | 22 | 0d |  |  |  |  |
